# Gantt

Schedule from MS Project, 2018-09-10 to 2022-01-21.
HP

## Calendars

- Estándar: Mon-Fri 09:00-13:00, 15:00-19:00; Sat-Sun off.

## Schedule

| ID | WBS | Task | Type | Duration | Start | Finish | Predecessors | Total slack | Free slack | Constraint |
| --- | --- | --- | --- | --- | --- | --- | --- | --- | --- | --- |
| 1 | 1 | Kick-Off meeting | milestone | 0d | 2018-09-10 | 2018-09-10 |  | 0d |  | start no earlier than 2018-09-10 |
| 2 | 2 | **Project Management** |  | 880d | 2018-09-10 | 2022-01-21 | 1 | 0d |  |  |
| 3 | 2.1 | Project management plan | milestone | 0d | 2018-10-05 | 2018-10-05 | 1FS+1mo | 0d |  |  |
| 4 | 2.2 | Development of the project management plan |  | 31d | 2018-09-10 | 2018-10-22 | 1, 3FF | 849d |  |  |
| 5 | 2.3 | **Monitoring of the Project** |  | 880d | 2018-09-10 | 2022-01-21 |  | 0d |  |  |
| 6 | 2.3.1 | Meetings |  | 880d | 2018-09-10 | 2022-01-21 | 1, 89FF | 0d |  |  |
| 7 | 2.3.2 | Task tracking and scheduling |  | 880d | 2018-09-10 | 2022-01-21 | 1, 89FF | 0d |  |  |
| 8 | 2.4 | Annual Reporting |  | 880d | 2018-09-10 | 2022-01-21 | 1, 89FF | 0d |  |  |
| 9 | 2.5 | Project Implementation of risk management |  | 880d | 2018-09-10 | 2022-01-21 | 1, 89FF | 0d |  |  |
| 10 | 3 | **Quality and Administration** |  | 880d | 2018-09-10 | 2022-01-21 |  | 0d |  |  |
| 11 | 3.1 | **Human resources** |  | 860d | 2018-10-08 | 2022-01-21 |  | 0d |  |  |
| 12 | 3.1.1 | Employment of the necessary staff |  | 30d | 2018-10-08 | 2018-11-16 | 3 | 0d |  |  |
| 13 | 3.1.2 | Human resources management |  | 830d | 2018-11-19 | 2022-01-21 | 12, 89FF | 0d |  |  |
| 14 | 3.2 | **Financial Plan** |  | 30d | 2018-09-10 | 2018-10-19 |  | 850d |  |  |
| 15 | 3.2.1 | **Costs** |  | 10d | 2018-09-10 | 2018-09-21 |  | 850d |  |  |
| 16 | 3.2.1.1 | Fix |  | 5d | 2018-09-10 | 2018-09-14 | 1 | 850d | 0d |  |
| 17 | 3.2.1.2 | Variable |  | 5d | 2018-09-17 | 2018-09-21 | 16 | 850d | 0d |  |
| 18 | 3.2.2 | Funding |  | 5d | 2018-09-24 | 2018-09-28 | 17 | 850d | 0d |  |
| 19 | 3.2.3 | Economic feasibility |  | 5d | 2018-10-01 | 2018-10-05 | 18 | 850d | 0d |  |
| 20 | 3.2.4 | Evolution monitoring |  | 5d | 2018-10-08 | 2018-10-12 | 19 | 850d | 0d |  |
| 21 | 3.2.5 | Additional and follow-up funding seek |  | 5d | 2018-10-15 | 2018-10-19 | 3FF, 20 | 850d |  |  |
| 22 | 3.3 | **Documentation Management** |  | 880d | 2018-09-10 | 2022-01-21 | 1 | 0d |  |  |
| 23 | 3.3.1 | Guidelines preparation |  | 880d | 2018-09-10 | 2022-01-21 | 89FF | 0d |  |  |
| 24 | 3.3.2 | Document revision |  | 880d | 2018-09-10 | 2022-01-21 | 89FF | 0d |  |  |
| 25 | 3.3.3 | Document rectification |  | 880d | 2018-09-10 | 2022-01-21 | 89FF | 0d |  |  |
| 26 | 3.3.4 | Document approval |  | 880d | 2018-09-10 | 2022-01-21 | 89FF | 0d |  |  |
| 27 | 3.4 | Periodic Monitoring |  | 880d | 2018-09-10 | 2022-01-21 | 1, 89FF | 0d |  |  |

| ID | WBS | Task | Type | Duration | Start | Finish | Predecessors | Total slack | Free slack |
| --- | --- | --- | --- | --- | --- | --- | --- | --- | --- |
| 28 | 4 | **State of the Art** |  | 60d | 2018-10-08 | 2018-12-28 |  | 740d |  |
| 29 | 4.1 | State of the Art report | milestone | 0d | 2018-12-28 | 2018-12-28 | 1FS+4mo | 800d |  |
| 30 | 4.2 | **Payloads** |  | 60d | 2018-10-08 | 2018-12-28 |  | 800d |  |
| 31 | 4.2.1 | Search for current space applications |  | 40d | 2018-10-08 | 2018-11-30 | 3 | 800d | 0d |
| 32 | 4.2.2 | Requirements definition |  | 20d | 2018-12-03 | 2018-12-28 | 29FF, 31 | 800d |  |
| 33 | 4.3 | **Modular System** |  | 60d | 2018-10-08 | 2018-12-28 |  | 800d |  |
| 34 | 4.3.1 | Search for current modular systems with space applications |  | 30d | 2018-10-08 | 2018-11-16 | 3 | 800d | 0d |
| 35 | 4.3.2 | Requirements definition |  | 30d | 2018-11-19 | 2018-12-28 | 29FF, 34 | 800d |  |
| 36 | 4.4 | **Urban Development Applications with Space Technologies** |  | 60d | 2018-10-08 | 2018-12-28 |  | 800d |  |
| 37 | 4.4.1 | **Search for current space applications** |  | 20d | 2018-10-08 | 2018-11-02 |  | 800d | 0d |
| 38 | 4.4.1.1 | Weather forecast |  | 20d | 2018-10-08 | 2018-11-02 | 3 | 800d |  |
| 39 | 4.4.1.2 | Urban planning (3D models) |  | 20d | 2018-10-08 | 2018-11-02 | 3 | 800d |  |
| 40 | 4.4.1.3 | Greenhouse emissions reductions (pollution) |  | 20d | 2018-10-08 | 2018-11-02 | 3 | 800d |  |
| 41 | 4.4.2 | Requirements definition |  | 40d | 2018-11-05 | 2018-12-28 | 29FF, 37 | 800d |  |
| 42 | 5 | **Product development** |  | 500d | 2018-12-31 | 2020-11-27 |  | 300d |  |
| 43 | 5.1 | **Preliminary design** |  | 240d | 2018-12-31 | 2019-11-29 |  | 540d |  |
| 44 | 5.1.1 | **Payloads** |  | 120d | 2018-12-31 | 2019-06-14 |  | 540d |  |
| 45 | 5.1.1.1 | Payload preliminary report | milestone | 0d | 2019-06-14 | 2019-06-14 | 1FS+10mo | 680d |  |
| 46 | 5.1.1.2 | Research |  | 70d | 2018-12-31 | 2019-04-05 | 29 | 680d | 0d |
| 47 | 5.1.1.3 | Development |  | 50d | 2019-04-08 | 2019-06-14 | 46, 45FF | 680d |  |
| 48 | 5.1.2 | **Modular system** |  | 60d | 2019-06-17 | 2019-09-06 |  | 420d |  |
| 49 | 5.1.2.1 | Modular system preliminary design | milestone | 0d | 2019-09-06 | 2019-09-06 | 1FS+13mo | 620d |  |
| 50 | 5.1.2.2 | Development of physical framework for sensor blocks |  | 30d | 2019-06-17 | 2019-07-26 | 45 | 650d |  |
| 51 | 5.1.2.3 | Development of systems interaction and applications |  | 25d | 2019-06-17 | 2019-07-19 | 45 | 630d | 0d |
| 52 | 5.1.2.4 | Development of sensors data fusion software |  | 20d | 2019-07-22 | 2019-08-16 | 51 | 630d | 10d |
| 53 | 5.1.2.5 | Definition of SATCOM applications domains |  | 5d | 2019-09-02 | 2019-09-06 | 52, 49FF | 620d |  |

| ID | WBS | Task | Type | Duration | Start | Finish | Predecessors | Total slack | Free slack | Constraint |
| --- | --- | --- | --- | --- | --- | --- | --- | --- | --- | --- |
| 54 | 5.1.3 | **Interaction platform** |  | 60d | 2019-09-09 | 2019-11-29 |  | 380d |  |  |
| 55 | 5.1.3.1 | Interaction platform preliminary design | milestone | 0d | 2019-11-29 | 2019-11-29 | 1FS+16mo | 560d |  |  |
| 56 | 5.1.3.2 | Implement web-based servers for sharing sensors data |  | 20d | 2019-09-09 | 2019-10-04 | 49 | 580d | 20d |  |
| 57 | 5.1.3.3 | Implement processing algorithms based on applications |  | 40d | 2019-09-09 | 2019-11-01 | 49 | 560d | 0d |  |
| 58 | 5.1.3.4 | Pre-design a full services stakeholders platform |  | 20d | 2019-11-04 | 2019-11-29 | 55FF, 56, 57 | 560d |  |  |
| 59 | 5.2 | **Final Design** |  | 380d | 2019-06-17 | 2020-11-27 |  | 300d |  |  |
| 60 | 5.2.1 | Mid-term project report | milestone | 0d | 2020-05-15 | 2020-05-15 | 1FS+22mo | 440d |  |  |
| 61 | 5.2.2 | **Payloads** |  | 260d | 2019-06-17 | 2020-06-12 |  | 420d |  |  |
| 62 | 5.2.2.1 | Payload final design | milestone | 0d | 2020-06-12 | 2020-06-12 | 1FS+23mo | 420d |  |  |
| 63 | 5.2.2.2 | Sensors final design |  | 200d | 2019-06-17 | 2020-03-20 | 45 | 420d | 0d |  |
| 64 | 5.2.2.3 | Sensors final technical specifications |  | 60d | 2020-03-23 | 2020-06-12 | 63, 62FF | 420d |  |  |
| 65 | 5.2.3 | **Modular System** |  | 260d | 2019-09-09 | 2020-09-04 |  | 360d |  |  |
| 66 | 5.2.3.1 | Modular system final design - milestone | milestone | 0d | 2020-09-04 | 2020-09-04 | 1FS+26mo | 360d |  |  |
| 67 | 5.2.3.2 | Modular system final design |  | 200d | 2019-09-09 | 2020-06-12 | 49 | 360d | 0d |  |
| 68 | 5.2.3.3 | Sensors data fusion software final design |  | 200d | 2019-09-09 | 2020-06-12 | 49 | 360d | 0d |  |
| 69 | 5.2.3.4 | Modular system's final technical specifications |  | 60d | 2020-06-15 | 2020-09-04 | 67, 68, 66FF | 360d |  |  |
| 70 | 5.2.4 | **Interaction Platform** |  | 260d | 2019-12-02 | 2020-11-27 |  | 300d |  |  |
| 71 | 5.2.4.1 | Interaction platform final design | milestone | 0d | 2020-11-27 | 2020-11-27 | 1FS+29mo | 298d | 0d | start no earlier than 2020-11-27 |
| 72 | 5.2.4.2 | Web based servers for data sharing final implementation |  | 100d | 2019-12-02 | 2020-04-17 | 55 | 320d | 0d |  |
| 73 | 5.2.4.3 | Processing algorithms based on applications final design |  | 180d | 2019-12-02 | 2020-08-07 | 55 | 380d |  |  |
| 74 | 5.2.4.4 | Full services stakeholders platform implementation |  | 120d | 2020-04-20 | 2020-10-02 | 72 | 320d | 20d |  |
| 75 | 5.2.4.5 | Final technical specifications |  | 20d | 2020-11-02 | 2020-11-27 | 74, 71FF | 300d |  |  |
| 76 | 6 | **Simulation, testing, validation and quality** |  | 420d | 2020-06-15 | 2022-01-21 |  | 0d |  |  |
| 77 | 6.1 | Prototype manufacturing | milestone | 0d | 2021-04-16 | 2021-04-16 | 1FS+34mo | 200d |  |  |

| ID | WBS | Task | Type | Duration | Start | Finish | Predecessors | Total slack | Free slack |
| --- | --- | --- | --- | --- | --- | --- | --- | --- | --- |
| 78 | 6.2 | **Technology Demonstrator Prototype Manufacturing** |  | 220d | 2020-06-15 | 2021-04-16 |  | 170d |  |
| 79 | 6.2.1 | Manufacturing of payload sensors |  | 100d | 2020-06-15 | 2020-10-30 | 62 | 290d | 150d |
| 80 | 6.2.2 | Manufacturing of modular system |  | 100d | 2020-09-07 | 2021-01-22 | 66 | 230d | 90d |
| 81 | 6.2.3 | Implementation of interaction platform |  | 100d | 2020-11-30 | 2021-04-16 | 71 | 170d | 30d |
| 82 | 6.3 | Payload Validation |  | 30d | 2021-05-31 | 2021-07-09 | 79, 85FF | 140d |  |
| 83 | 6.4 | Modular System Validation |  | 30d | 2021-05-31 | 2021-07-09 | 80, 85FF | 140d |  |
| 84 | 6.5 | Interaction Platform Validation |  | 30d | 2021-05-31 | 2021-07-09 | 81, 85FF | 140d |  |
| 85 | 6.6 | Individual systems testing | milestone | 0d | 2021-07-09 | 2021-07-09 | 1FS+37mo | 138d | 0d |
| 86 | 6.7 | Full System Prototype Validation |  | 70d | 2021-07-26 | 2021-10-29 | 85, 87FF | 60d |  |
| 87 | 6.8 | Full system testing | milestone | 0d | 2021-10-29 | 2021-10-29 | 1FS+41mo | 60d |  |
| 88 | 6.9 | Quality of the product |  | 50d | 2021-11-15 | 2022-01-21 | 87, 89FF | 0d |  |
| 89 | 6.10 | Final report | milestone | 0d | 2022-01-21 | 2022-01-21 | 1FS+44mo | 0d |  |
| 90 | 7 | **Business planning and exploitation of results** |  | 20d | 2018-09-10 | 2018-10-05 |  | 860d |  |
| 91 | 7.1 | Bussines plan | milestone | 0d | 2018-10-05 | 2018-10-05 | 1FS+1mo | 860d |  |
| 92 | 7.2 | **Market Approach** |  | 12d | 2018-09-10 | 2018-09-25 |  | 860d | 0d |
| 93 | 7.2.1 | Study of stakeholders |  | 8d | 2018-09-10 | 2018-09-19 | 1 | 864d |  |
| 94 | 7.2.2 | Procurement conditions negotation |  | 5d | 2018-09-10 | 2018-09-14 | 1 | 867d |  |
| 95 | 7.2.3 | Resources purchase |  | 12d | 2018-09-10 | 2018-09-25 | 1 | 860d |  |
| 96 | 7.3 | Exploitation and Business Plans |  | 8d | 2018-09-26 | 2018-10-05 | 92, 91FF | 860d |  |
| 97 | 8 | **Communication and dissemination strategies** |  | 880d | 2018-09-10 | 2022-01-21 |  | 0d |  |
| 98 | 8.1 | Communication plan | milestone | 0d | 2018-10-05 | 2018-10-05 | 1FS+1mo | 0d |  |
| 99 | 8.2 | Dissemination and Communication plan |  | 1mo | 2018-09-10 | 2018-10-05 | 1, 98FF | 860d |  |
| 100 | 8.3 | **On-line Dissemination/Communication Activities** |  | 860d | 2018-10-08 | 2022-01-21 |  | 0d |  |
| 101 | 8.3.1 | Web site development |  | 90d | 2018-10-08 | 2019-02-08 | 98 | 0d |  |
| 102 | 8.3.2 | Social media management |  | 770d | 2019-02-11 | 2022-01-21 | 101, 89FF | 0d |  |

| ID | WBS | Task | Duration | Start | Finish | Predecessors | Total slack |
| --- | --- | --- | --- | --- | --- | --- | --- |
| 103 | 8.4 | **Off-line Dissemination/Communication Activities** | 800d | 2018-12-31 | 2022-01-21 |  | 0d |
| 104 | 8.4.1 | Conferences | 800d | 2018-12-31 | 2022-01-21 | 3, 89FF | 0d |
| 105 | 8.4.2 | Meetings | 800d | 2018-12-31 | 2022-01-21 | 3, 89FF | 0d |
| 106 | 8.5 | **Production of Dissemination Materials** | 500d | 2020-02-24 | 2022-01-21 |  | 0d |
| 107 | 8.5.1 | Technology demonstrators | 300d | 2020-11-30 | 2022-01-21 | 89FF, 3 | 0d |
| 108 | 8.5.2 | Audio visual material production | 500d | 2020-02-24 | 2022-01-21 | 3, 89FF | 0d |
